Schedule from MS Project, 2017-05-02 to 2017-07-31, costs in $.
Hewlett-Packard

## Calendars

- EddyBurguer: Mon-Fri 09:00-13:00, 15:00-19:00; Sat-Sun off. Exceptions (off unless hours are given): 2017-05-05 (No laboral), 2017-05-15 (No laboral), 2017-07-17 to 2017-07-28 (vacaciones).

## Resources

| Resource | Rate |
| --- | --- |
| MAFR_AD | 160 |
| AOC_AN | 140 |
| RUR_D | 120 |
| RUR_QA | 150 |
| AOC_AC | 150 |
| AOC_P1 | 112 |
| AS_CLI |  |
| RUR_TES | 110 |
| MAFR_P2 | 112 |
| RUR_ING_VYL | 150 |

## Schedule

| ID | WBS | Task | Type | Duration | Start | Finish | Predecessors | Total slack | Free slack | Resources | Work | Cost |
| --- | --- | --- | --- | --- | --- | --- | --- | --- | --- | --- | --- | --- |
| 1 | 1 | **Mejora de procesos** |  | 0.75d | 2017-05-02 09:00 | 2017-05-02 17:00 |  | 4.12d |  |  | 18h | 2,760 |
| 2 | 1.1 | **Plan preliminar** |  | 0.75d | 2017-05-02 09:00 | 2017-05-02 17:00 |  | 4.12d |  |  | 18h | 2,760 |
| 3 | 1.1.1 | Generar un WBS del producto inicial |  | 1h | 2017-05-02 09:00 | 2017-05-02 10:00 |  | 4.12d | 0d | MAFR_AD; RUR_QA; AOC_AC | 3h | 460 |
| 4 | 1.1.2 | Generar project charter |  | 2h | 2017-05-02 10:00 | 2017-05-02 12:00 | 3 | 4.12d | 0d | MAFR_AD; RUR_QA; AOC_AC | 6h | 920 |
| 5 | 1.1.3 | Plan preliminar del proyecto |  | 2h | 2017-05-02 12:00 | 2017-05-02 16:00 | 4 | 4.12d | 0d | MAFR_AD; RUR_QA; AOC_AC | 6h | 920 |
| 6 | 1.1.4 | Matriz de responsabilidades |  | 1h | 2017-05-02 16:00 | 2017-05-02 17:00 | 5 | 4.12d | 0d | MAFR_AD; RUR_QA; AOC_AC | 3h | 460 |
| 7 | 2 | **EddyBurguer** |  | 53d? | 2017-05-02 09:00 | 2017-07-31 19:00 |  | 0d |  |  | 566h | 70,712 |
| 8 | 2.1 | Formación del equipo de desarrollo |  | 1d | 2017-05-02 17:00 | 2017-05-03 17:00 | 6 | 4.12d | 0d | MAFR_AD | 8h | 1,280 |
| 9 | 2.2 | **Análisis** |  | 9.5d | 2017-05-02 09:00 | 2017-05-17 13:00 |  | 5.12d | 0d |  | 113h | 14,688 |
| 10 | 2.2.1 | **Elicitación de requerimientos** |  | 5.25d | 2017-05-03 17:00 | 2017-05-11 19:00 |  | 4.12d |  |  | 50h | 7,080 |
| 11 | 2.2.1.1 | Generar lista de proveedores |  | 1h | 2017-05-03 17:00 | 2017-05-03 18:00 | 8 | 4.12d | 0d | AOC_AN | 1h | 140 |
| 12 | 2.2.1.2 | Evaluar proveedores de requerimientos |  | 4h | 2017-05-03 18:00 | 2017-05-04 12:00 | 11 | 4.12d | 0d | MAFR_AD | 4h | 640 |
| 13 | 2.2.1.3 | Definir la estrategia de recolección de requerimientos |  | 1h | 2017-05-04 12:00 | 2017-05-04 13:00 | 12 | 4.12d | 0d | AOC_AN | 1h | 140 |
| 14 | 2.2.1.4 | Planificar reuniones de elicitación de requerimientos |  | 2d | 2017-05-04 15:00 | 2017-05-08 13:00 | 13 | 4.12d | 0d | AOC_AN | 16h | 2,240 |
| 15 | 2.2.1.5 | Identificar los procesos del sistema |  | 16h | 2017-05-08 15:00 | 2017-05-10 13:00 | 14 | 4.12d | 0d | AOC_AN | 16h | 2,240 |
| 16 | 2.2.1.6 | Identificar requerimientos funcionales |  | 8h | 2017-05-10 15:00 | 2017-05-11 13:00 | 15 | 4.12d | 0d | AOC_AN | 8h | 1,120 |
| 17 | 2.2.1.7 | Identificar requerimientos no funcionales |  | 4h | 2017-05-11 15:00 | 2017-05-11 19:00 | 16 | 4.12d | 0d | AOC_AN | 4h | 560 |
| 18 | 2.2.2 | **Especificación de requerimientos** |  | 1d | 2017-05-12 09:00 | 2017-05-15 19:00 |  | 4.12d |  |  | 44h | 5,088 |
| 19 | 2.2.2.1 | Describir los requerimientos |  | 4h | 2017-05-12 09:00 | 2017-05-12 13:00 | 17 | 4.12d | 0d | AOC_AN | 4h | 560 |
| 20 | 2.2.2.2 | Evaluar los requerimientos |  | 4h | 2017-05-12 15:00 | 2017-05-12 19:00 | 19 | 4.12d | 0d | AOC_AN; MAFR_AD; AOC_P1; RUR_D | 16h | 2,128 |
| 21 | 2.2.2.3 | SRS |  | 8h | 2017-05-15 09:00 | 2017-05-15 19:00 | 20 | 4.12d | 0d | AOC_AN; MAFR_AD; AS_CLI | 24h | 2,400 |
| 22 | 2.2.3 | **Gestión de requerimientos** |  | 1d | 2017-05-16 09:00 | 2017-05-16 19:00 |  | 5.12d |  |  | 15h | 1,920 |
| 23 | 2.2.3.1 | Priorizar los requerimientos |  | 2h | 2017-05-16 09:00 | 2017-05-16 11:00 | 21 | 5.12d | 0d | AOC_AN | 2h | 280 |
| 24 | 2.2.3.2 | Almacenar los requerimientos en un repositorio central |  | 1h | 2017-05-16 11:00 | 2017-05-16 12:00 | 23 | 5.12d | 0d | AOC_AN | 1h | 140 |
| 25 | 2.2.3.3 | Asignar al grupo de desarrollo los requerimientos del software |  | 1h | 2017-05-16 12:00 | 2017-05-16 13:00 | 24 | 5.12d | 0d | AOC_AN; MAFR_AD | 2h | 300 |
| 26 | 2.2.3.4 | Administrar los cambios de los requerimientos |  | 2h | 2017-05-16 15:00 | 2017-05-16 17:00 | 25 | 5.12d | 0d | AOC_AN; AS_CLI; MAFR_AD | 6h | 600 |
| 27 | 2.2.3.5 | Administrar la trazabilidad de los requerimientos |  | 2h | 2017-05-16 17:00 | 2017-05-16 19:00 | 26 | 5.12d | 0d | AOC_AN; MAFR_AD | 4h | 600 |
| 28 | 2.2.4 | Pruebas de aceptación |  | 4h | 2017-05-17 09:00 | 2017-05-17 13:00 | 27 | 5.12d | 0d | RUR_ING_VYL | 4h | 600 |
| 29 | 2.2.5 | Hito de análisis | milestone | 0d | 2017-05-02 09:00 | 2017-05-02 09:00 |  | 14.62d |  |  |  |  |

| ID | WBS | Task | Type | Duration | Start | Finish | Predecessors | Total slack | Free slack | Resources | Work | Cost |
| --- | --- | --- | --- | --- | --- | --- | --- | --- | --- | --- | --- | --- |
| 30 | 2.3 | **Planificación** |  | 5.12d | 2017-05-17 13:00 | 2017-05-24 16:00 | 9 | 5.12d | 0d |  | 85h | 12,316 |
| 31 | 2.3.1 | Definir el ciclo de vida |  | 2h | 2017-05-17 15:00 | 2017-05-17 17:00 | 28 | 5.12d | 0d | AOC_AN; MAFR_AD | 4h | 600 |
| 32 | 2.3.2 | Políticas del proyecto |  | 2h | 2017-05-17 17:00 | 2017-05-17 19:00 | 31 | 5.12d | 0d | MAFR_AD | 2h | 320 |
| 33 | 2.3.3 | Actualizar plan de proyecto |  | 4h | 2017-05-18 09:00 | 2017-05-18 13:00 | 32 | 5.12d | 0d | MAFR_AD | 4h | 640 |
| 34 | 2.3.4 | **Estimación** |  | 1.12d | 2017-05-18 15:00 | 2017-05-19 16:00 | 33 | 5.12d | 0d |  | 9h | 1,440 |
| 35 | 2.3.4.1 | Actualizar WBS/calendario |  | 4h | 2017-05-18 15:00 | 2017-05-18 19:00 | 33 | 5.12d | 0d | MAFR_AD | 4h | 640 |
| 36 | 2.3.4.2 | Diccionario del WBS |  | 3h | 2017-05-19 09:00 | 2017-05-19 12:00 | 35 | 5.12d | 0d | MAFR_AD | 3h | 480 |
| 37 | 2.3.4.3 | Costos |  | 2h | 2017-05-19 12:00 | 2017-05-19 16:00 | 36 | 5.12d | 0d | MAFR_AD | 2h | 320 |
| 38 | 2.3.5 | **Riesgos** |  | 1.25d | 2017-05-19 16:00 | 2017-05-22 18:00 | 34 | 5.12d | 0d |  | 20h | 3,000 |
| 39 | 2.3.5.1 | Identificación de riesgos |  | 4h | 2017-05-19 16:00 | 2017-05-22 10:00 | 37 | 5.12d | 0d | AOC_AN; MAFR_AD | 8h | 1,200 |
| 40 | 2.3.5.2 | Asignación de prioridades |  | 4h | 2017-05-22 10:00 | 2017-05-22 16:00 | 39 | 5.12d | 0d | AOC_AN; MAFR_AD | 8h | 1,200 |
| 41 | 2.3.5.3 | Plan de mitigación y contingencia |  | 2h | 2017-05-22 16:00 | 2017-05-22 18:00 | 40 | 5.12d | 0.25d | AOC_AN; MAFR_AD | 4h | 600 |
| 42 | 2.3.6 | **Aseguramiento de la calidad** |  | 1.5d | 2017-05-22 18:00 | 2017-05-24 12:00 | 38 | 5.12d |  |  | 44h | 6,016 |
| 43 | 2.3.6.1 | Plan de gestión de la configuración |  | 1d | 2017-05-22 18:00 | 2017-05-23 18:00 | 41SS | 5.12d | 0d | AOC_AC | 8h | 1,200 |
| 44 | 2.3.6.2 | Junta de arranque de construcción |  | 4h | 2017-05-23 18:00 | 2017-05-24 12:00 | 43 | 5.12d | 0d | AOC_AC; AOC_AN; AOC_P1; MAFR_AD; MAFR_P2; RUR_D; RUR_ING_VYL; RUR_QA; RUR_TES | 36h | 4,816 |
| 45 | 2.3.7 | Pruebas de aceptación |  | 2h | 2017-05-24 12:00 | 2017-05-24 16:00 | 44 | 5.12d | 0d | RUR_ING_VYL | 2h | 300 |
| 46 | 2.3.8 | Hito planificación | milestone | 0d | 2017-05-17 13:00 | 2017-05-17 13:00 |  | 10.25d |  |  |  |  |
| 47 | 2.4 | **Diseño** |  | 3.25d | 2017-05-24 16:00 | 2017-05-29 18:00 | 30 | 5.12d | 0d |  | 26h | 3,120 |
| 48 | 2.4.1 | Definición de la arquitectura |  | 4h | 2017-05-24 16:00 | 2017-05-25 10:00 | 45 | 5.12d | 0d | RUR_D | 4h | 480 |
| 49 | 2.4.2 | **Diagramas UML** |  | 1.5d | 2017-05-25 10:00 | 2017-05-26 16:00 |  | 5.12d |  |  | 12h | 1,440 |
| 50 | 2.4.2.1 | Diagramas de casos de uso |  | 2h | 2017-05-25 10:00 | 2017-05-25 12:00 | 48 | 5.12d | 0d | RUR_D | 2h | 240 |
| 51 | 2.4.2.2 | Diagramas de secuencia |  | 2h | 2017-05-25 12:00 | 2017-05-25 16:00 | 50 | 5.12d | 0d | RUR_D | 2h | 240 |
| 52 | 2.4.2.3 | Diagrama de clases |  | 2h | 2017-05-25 16:00 | 2017-05-25 18:00 | 51 | 5.12d | 0d | RUR_D | 2h | 240 |
| 53 | 2.4.2.4 | Diagrama de actividades |  | 2h | 2017-05-25 18:00 | 2017-05-26 10:00 | 52 | 5.12d | 0d | RUR_D | 2h | 240 |
| 54 | 2.4.2.5 | Diagrama de componentes |  | 2h | 2017-05-26 10:00 | 2017-05-26 12:00 | 53 | 5.12d | 0d | RUR_D | 2h | 240 |
| 55 | 2.4.2.6 | Diagrama de despliegue |  | 2h | 2017-05-26 12:00 | 2017-05-26 16:00 | 54 | 5.12d | 0d | RUR_D | 2h | 240 |
| 56 | 2.4.3 | Mapa de navegación |  | 2h | 2017-05-26 16:00 | 2017-05-26 18:00 | 55 | 5.12d | 0d | RUR_D | 2h | 240 |
| 57 | 2.4.4 | Bocetos/maquetación |  | 2h | 2017-05-26 18:00 | 2017-05-29 10:00 | 56 | 5.12d | 0d | RUR_D | 2h | 240 |

| ID | WBS | Task | Type | Duration | Start | Finish | Predecessors | Total slack | Free slack | Resources | Work | Cost |
| --- | --- | --- | --- | --- | --- | --- | --- | --- | --- | --- | --- | --- |
| 58 | 2.4.5 | **Base de datos** |  | 0.5d | 2017-05-29 10:00 | 2017-05-29 16:00 |  | 5.12d |  |  | 4h | 480 |
| 59 | 2.4.5.1 | Diagrama E-R |  | 2h | 2017-05-29 10:00 | 2017-05-29 12:00 | 57 | 5.12d | 0d | RUR_D | 2h | 240 |
| 60 | 2.4.5.2 | Diagrama relacional |  | 2h | 2017-05-29 12:00 | 2017-05-29 16:00 | 59 | 5.12d | 0d | RUR_D | 2h | 240 |
| 61 | 2.4.6 | Pruebas de integración y de unidad |  | 2h | 2017-05-29 16:00 | 2017-05-29 18:00 | 60 | 5.12d | 0d | RUR_D | 2h | 240 |
| 62 | 2.4.7 | Hito de diseño | milestone | 0d | 2017-05-24 16:00 | 2017-05-24 16:00 |  | 8.38d |  |  |  |  |
| 63 | 2.5 | **Codificación** |  | 17.5d | 2017-05-29 18:00 | 2017-06-22 12:00 | 47 | 5.12d | 0d |  | 140h | 16,592 |
| 64 | 2.5.1 | Codificación de la base de datos |  | 4h | 2017-05-29 18:00 | 2017-05-30 12:00 | 61 | 5.12d | 0d | AOC_P1 | 4h | 448 |
| 65 | 2.5.2 | **Front-end** |  | 0.75d | 2017-05-30 12:00 | 2017-05-31 10:00 |  | 5.12d |  |  | 6h | 672 |
| 66 | 2.5.2.1 | Página inicio |  | 1h | 2017-05-30 12:00 | 2017-05-30 13:00 | 64 | 5.12d | 0d | MAFR_P2 | 1h | 112 |
| 67 | 2.5.2.2 | Página FAQ |  | 1h | 2017-05-30 15:00 | 2017-05-30 16:00 | 66 | 5.12d | 0d | MAFR_P2 | 1h | 112 |
| 68 | 2.5.2.3 | Página instalaciones |  | 1h | 2017-05-30 16:00 | 2017-05-30 17:00 | 67 | 5.12d | 0d | MAFR_P2 | 1h | 112 |
| 69 | 2.5.2.4 | Página productos |  | 1h | 2017-05-30 17:00 | 2017-05-30 18:00 | 68 | 5.12d | 0d | MAFR_P2 | 1h | 112 |
| 70 | 2.5.2.5 | Página Contacto |  | 1h | 2017-05-30 18:00 | 2017-05-30 19:00 | 69 | 5.12d | 0d | MAFR_P2 | 1h | 112 |
| 71 | 2.5.2.6 | Página filosofía empresarial |  | 1h | 2017-05-31 09:00 | 2017-05-31 10:00 | 70 | 5.12d | 0d | MAFR_P2 | 1h | 112 |
| 72 | 2.5.3 | **Back-end** |  | 13.25d | 2017-05-31 10:00 | 2017-06-19 12:00 |  | 5.12d |  |  | 106h | 11,872 |
| 73 | 2.5.3.1 | **Módulo de usuarios** |  | 1.75d | 2017-05-31 10:00 | 2017-06-01 18:00 |  | 5.12d |  |  | 14h | 1,568 |
| 74 | 2.5.3.1.1 | Interfaz |  | 1h | 2017-05-31 10:00 | 2017-05-31 11:00 | 71 | 5.12d | 0d | AOC_P1 | 1h | 112 |
| 75 | 2.5.3.1.2 | Formulario Editar/Agregar |  | 1h | 2017-05-31 11:00 | 2017-05-31 12:00 | 74 | 5.12d | 0d | AOC_P1 | 1h | 112 |
| 76 | 2.5.3.1.3 | **Clase usuario** |  | 1.5d | 2017-05-31 12:00 | 2017-06-01 18:00 |  | 5.12d |  |  | 12h | 1,344 |
| 77 | 2.5.3.1.3.1 | Función listar |  | 3h | 2017-05-31 12:00 | 2017-05-31 17:00 | 75 | 5.12d | 0d | AOC_P1 | 3h | 336 |
| 78 | 2.5.3.1.3.2 | Función registrar |  | 3h | 2017-05-31 17:00 | 2017-06-01 10:00 | 77 | 5.12d | 0d | AOC_P1 | 3h | 336 |
| 79 | 2.5.3.1.3.3 | Función editar |  | 3h | 2017-06-01 10:00 | 2017-06-01 13:00 | 78 | 5.12d | 0d | AOC_P1 | 3h | 336 |
| 80 | 2.5.3.1.3.4 | Función eliminar |  | 3h | 2017-06-01 15:00 | 2017-06-01 18:00 | 79 | 5.12d | 0d | AOC_P1 | 3h | 336 |
| 81 | 2.5.3.2 | **Módulo productos** |  | 1.75d | 2017-06-01 18:00 | 2017-06-05 16:00 |  | 5.12d |  |  | 14h | 1,568 |
| 82 | 2.5.3.2.1 | Interfaz |  | 1h | 2017-06-01 18:00 | 2017-06-01 19:00 | 80 | 5.12d | 0d | AOC_P1 | 1h | 112 |
| 83 | 2.5.3.2.2 | Formulario Editar/Agregar |  | 1h | 2017-06-02 09:00 | 2017-06-02 10:00 | 82 | 5.12d | 0d | AOC_P1 | 1h | 112 |

| ID | WBS | Task | Duration | Start | Finish | Predecessors | Total slack | Free slack | Resources | Work | Cost |
| --- | --- | --- | --- | --- | --- | --- | --- | --- | --- | --- | --- |
| 84 | 2.5.3.2.3 | **Clase productos** | 1.5d | 2017-06-02 10:00 | 2017-06-05 16:00 |  | 5.12d |  |  | 12h | 1,344 |
| 85 | 2.5.3.2.3.1 | Función listar | 3h | 2017-06-02 10:00 | 2017-06-02 13:00 | 83 | 5.12d | 0d | AOC_P1 | 3h | 336 |
| 86 | 2.5.3.2.3.2 | Función registrar | 3h | 2017-06-02 15:00 | 2017-06-02 18:00 | 85 | 5.12d | 0d | AOC_P1 | 3h | 336 |
| 87 | 2.5.3.2.3.3 | Función editar | 3h | 2017-06-02 18:00 | 2017-06-05 11:00 | 86 | 5.12d | 0d | AOC_P1 | 3h | 336 |
| 88 | 2.5.3.2.3.4 | Función eliminar | 3h | 2017-06-05 11:00 | 2017-06-05 16:00 | 87 | 5.12d | 0d | AOC_P1 | 3h | 336 |
| 89 | 2.5.3.3 | **Módulo empleados** | 1.75d | 2017-06-05 16:00 | 2017-06-07 12:00 |  | 5.12d |  |  | 14h | 1,568 |
| 90 | 2.5.3.3.1 | Interfaz | 1h | 2017-06-05 16:00 | 2017-06-05 17:00 | 88 | 5.12d | 0d | MAFR_P2 | 1h | 112 |
| 91 | 2.5.3.3.2 | Formulario Editar/Agregar | 1h | 2017-06-05 17:00 | 2017-06-05 18:00 | 90 | 5.12d | 0d | MAFR_P2 | 1h | 112 |
| 92 | 2.5.3.3.3 | **Clase empleados** | 1.5d | 2017-06-05 18:00 | 2017-06-07 12:00 |  | 5.12d |  |  | 12h | 1,344 |
| 93 | 2.5.3.3.3.1 | Función listar | 3h | 2017-06-05 18:00 | 2017-06-06 11:00 | 91 | 5.12d | 0d | MAFR_P2 | 3h | 336 |
| 94 | 2.5.3.3.3.2 | Función registrar | 3h | 2017-06-06 11:00 | 2017-06-06 16:00 | 93 | 5.12d | 0d | MAFR_P2 | 3h | 336 |
| 95 | 2.5.3.3.3.3 | Función editar | 3h | 2017-06-06 16:00 | 2017-06-06 19:00 | 94 | 5.12d | 0d | MAFR_P2 | 3h | 336 |
| 96 | 2.5.3.3.3.4 | Función eliminar | 3h | 2017-06-07 09:00 | 2017-06-07 12:00 | 95 | 5.12d | 0d | MAFR_P2 | 3h | 336 |
| 97 | 2.5.3.4 | **Módulo proveedores** | 1.75d | 2017-06-07 12:00 | 2017-06-09 10:00 |  | 5.12d |  |  | 14h | 1,568 |
| 98 | 2.5.3.4.1 | Interfaz | 1h | 2017-06-07 12:00 | 2017-06-07 13:00 | 96 | 5.12d | 0d | MAFR_P2 | 1h | 112 |
| 99 | 2.5.3.4.2 | Formulario Editar/Agregar | 1h | 2017-06-07 15:00 | 2017-06-07 16:00 | 98 | 5.12d | 0d | MAFR_P2 | 1h | 112 |
| 100 | 2.5.3.4.3 | **Clase proveedores** | 1.5d | 2017-06-07 16:00 | 2017-06-09 10:00 |  | 5.12d |  |  | 12h | 1,344 |
| 101 | 2.5.3.4.3.1 | Función listar | 3h | 2017-06-07 16:00 | 2017-06-07 19:00 | 99 | 5.12d | 0d | MAFR_P2 | 3h | 336 |
| 102 | 2.5.3.4.3.2 | Función registrar | 3h | 2017-06-08 09:00 | 2017-06-08 12:00 | 101 | 5.12d | 0d | MAFR_P2 | 3h | 336 |
| 103 | 2.5.3.4.3.3 | Función editar | 3h | 2017-06-08 12:00 | 2017-06-08 17:00 | 102 | 5.12d | 0d | MAFR_P2 | 3h | 336 |
| 104 | 2.5.3.4.3.4 | Función eliminar | 3h | 2017-06-08 17:00 | 2017-06-09 10:00 | 103 | 5.12d | 0d | MAFR_P2 | 3h | 336 |
| 105 | 2.5.3.5 | **Módulo Marcas** | 1.75d | 2017-06-09 10:00 | 2017-06-12 18:00 |  | 5.12d |  |  | 14h | 1,568 |
| 106 | 2.5.3.5.1 | Interfaz | 1h | 2017-06-09 10:00 | 2017-06-09 11:00 | 104 | 5.12d | 0d | AOC_P1 | 1h | 112 |
| 107 | 2.5.3.5.2 | Formulario Editar/Agregar | 1h | 2017-06-09 11:00 | 2017-06-09 12:00 | 106 | 5.12d | 0d | AOC_P1 | 1h | 112 |

| ID | WBS | Task | Type | Duration | Start | Finish | Predecessors | Total slack | Free slack | Resources | Work | Cost |
| --- | --- | --- | --- | --- | --- | --- | --- | --- | --- | --- | --- | --- |
| 108 | 2.5.3.5.3 | **Clase Marcas** |  | 1.5d | 2017-06-09 12:00 | 2017-06-12 18:00 |  | 5.12d |  |  | 12h | 1,344 |
| 109 | 2.5.3.5.3.1 | Función listar |  | 3h | 2017-06-09 12:00 | 2017-06-09 17:00 | 107 | 5.12d | 0d | AOC_P1 | 3h | 336 |
| 110 | 2.5.3.5.3.2 | Función registrar |  | 3h | 2017-06-09 17:00 | 2017-06-12 10:00 | 109 | 5.12d | 0d | AOC_P1 | 3h | 336 |
| 111 | 2.5.3.5.3.3 | Función editar |  | 3h | 2017-06-12 10:00 | 2017-06-12 13:00 | 110 | 5.12d | 0d | AOC_P1 | 3h | 336 |
| 112 | 2.5.3.5.3.4 | Función eliminar |  | 3h | 2017-06-12 15:00 | 2017-06-12 18:00 | 111 | 5.12d | 0d | AOC_P1 | 3h | 336 |
| 113 | 2.5.3.6 | **Módulo categorías** |  | 1.75d | 2017-06-12 18:00 | 2017-06-14 16:00 |  | 5.12d |  |  | 14h | 1,568 |
| 114 | 2.5.3.6.1 | Interfaz |  | 1h | 2017-06-12 18:00 | 2017-06-12 19:00 | 112 | 5.12d | 0d | AOC_P1 | 1h | 112 |
| 115 | 2.5.3.6.2 | Formulario Editar/Agregar |  | 1h | 2017-06-13 09:00 | 2017-06-13 10:00 | 114 | 5.12d | 0d | AOC_P1 | 1h | 112 |
| 116 | 2.5.3.6.3 | **Clase Categorías** |  | 1.5d | 2017-06-13 10:00 | 2017-06-14 16:00 |  | 5.12d |  |  | 12h | 1,344 |
| 117 | 2.5.3.6.3.1 | Función listar |  | 3h | 2017-06-13 10:00 | 2017-06-13 13:00 | 115 | 5.12d | 0d | AOC_P1 | 3h | 336 |
| 118 | 2.5.3.6.3.2 | Función registrar |  | 3h | 2017-06-13 15:00 | 2017-06-13 18:00 | 117 | 5.12d | 0d | AOC_P1 | 3h | 336 |
| 119 | 2.5.3.6.3.3 | Función editar |  | 3h | 2017-06-13 18:00 | 2017-06-14 11:00 | 118 | 5.12d | 0d | AOC_P1 | 3h | 336 |
| 120 | 2.5.3.6.3.4 | Función eliminar |  | 3h | 2017-06-14 11:00 | 2017-06-14 16:00 | 119 | 5.12d | 0d | AOC_P1 | 3h | 336 |
| 121 | 2.5.3.7 | **Módulo Ventas** |  | 1.38d | 2017-06-14 16:00 | 2017-06-15 19:00 |  | 5.12d |  |  | 11h | 1,232 |
| 122 | 2.5.3.7.1 | Interfaz |  | 1h | 2017-06-14 16:00 | 2017-06-14 17:00 | 120 | 5.12d | 0d | AOC_P1 | 1h | 112 |
| 123 | 2.5.3.7.2 | Formulario Editar/Agregar |  | 1h | 2017-06-14 17:00 | 2017-06-14 18:00 | 122 | 5.12d | 0d | AOC_P1 | 1h | 112 |
| 124 | 2.5.3.7.3 | **Clase Ventas** |  | 1.12d | 2017-06-14 18:00 | 2017-06-15 19:00 |  | 5.12d |  |  | 9h | 1,008 |
| 125 | 2.5.3.7.3.1 | Función listar |  | 3h | 2017-06-14 18:00 | 2017-06-15 11:00 | 123 | 5.12d | 0d | AOC_P1 | 3h | 336 |
| 126 | 2.5.3.7.3.2 | Función registrar |  | 3h | 2017-06-15 11:00 | 2017-06-15 16:00 | 125 | 5.12d | 0d | AOC_P1 | 3h | 336 |
| 127 | 2.5.3.7.3.3 | Función eliminar |  | 3h | 2017-06-15 16:00 | 2017-06-15 19:00 | 126 | 5.12d | 0d | AOC_P1 | 3h | 336 |
| 128 | 2.5.3.8 | **Módulo Pedidos** |  | 1.38d | 2017-06-16 09:00 | 2017-06-19 12:00 |  | 5.12d |  |  | 11h | 1,232 |
| 129 | 2.5.3.8.1 | Interfaz |  | 1h | 2017-06-16 09:00 | 2017-06-16 10:00 | 127 | 5.12d | 0d | MAFR_P2 | 1h | 112 |
| 130 | 2.5.3.8.2 | Formulario Editar/Agregar |  | 1h | 2017-06-16 10:00 | 2017-06-16 11:00 | 129 | 5.12d | 0d | MAFR_P2 | 1h | 112 |
| 131 | 2.5.3.8.3 | **Clase pedidos** |  | 1.12d | 2017-06-16 11:00 | 2017-06-19 12:00 |  | 5.12d |  |  | 9h | 1,008 |
| 132 | 2.5.3.8.3.1 | Función listar |  | 3h | 2017-06-16 11:00 | 2017-06-16 16:00 | 130 | 5.12d | 0d | MAFR_P2 | 3h | 336 |
| 133 | 2.5.3.8.3.2 | Función registrar |  | 3h | 2017-06-16 16:00 | 2017-06-16 19:00 | 132 | 5.12d | 0d | MAFR_P2 | 3h | 336 |
| 134 | 2.5.3.8.3.3 | Función eliminar |  | 3h | 2017-06-19 09:00 | 2017-06-19 12:00 | 133 | 5.12d | 0d | MAFR_P2 | 3h | 336 |
| 135 | 2.5.4 | Operación y mantenimiento |  | 3d | 2017-06-19 12:00 | 2017-06-22 12:00 | 134 | 5.12d | 0d | RUR_ING_VYL | 24h | 3,600 |
| 136 | 2.5.5 | Hito codificación | milestone | 0d | 2017-05-29 18:00 | 2017-05-29 18:00 |  | 22.62d |  |  |  |  |

| ID | WBS | Task | Type | Duration | Start | Finish | Predecessors | Total slack | Free slack | Resources | Work | Cost |
| --- | --- | --- | --- | --- | --- | --- | --- | --- | --- | --- | --- | --- |
| 137 | 2.6 | **Pruebas** |  | 16.62d | 2017-06-22 12:00 | 2017-07-20 12:00 | 63 | 0d |  |  | 160h | 18,240 |
| 138 | 2.6.1 | **Caja blanca** |  | 16.62d | 2017-06-22 12:00 | 2017-07-20 12:00 |  | 0d |  |  | 160h | 18,240 |
| 139 | 2.6.1.1 | **Módulo de usuarios** |  | 2d | 2017-06-22 12:00 | 2017-06-26 12:00 |  | 5.12d |  |  | 16h | 1,760 |
| 140 | 2.6.1.1.1 | Pruebas unitarias |  | 1d | 2017-06-22 12:00 | 2017-06-23 12:00 | 135 | 5.12d | 0d | RUR_TES | 8h | 880 |
| 141 | 2.6.1.1.2 | Pruebas de módulo |  | 1d | 2017-06-23 12:00 | 2017-06-26 12:00 | 140 | 5.12d | 0d | RUR_TES | 8h | 880 |
| 142 | 2.6.1.2 | **Módulo de productos** |  | 2d | 2017-06-26 12:00 | 2017-06-28 12:00 |  | 5.12d |  |  | 16h | 1,760 |
| 143 | 2.6.1.2.1 | Pruebas unitarias |  | 1d | 2017-06-26 12:00 | 2017-06-27 12:00 | 141 | 5.12d | 0d | RUR_TES | 8h | 880 |
| 144 | 2.6.1.2.2 | Pruebas de módulo |  | 1d | 2017-06-27 12:00 | 2017-06-28 12:00 | 143 | 5.12d | 0d | RUR_TES | 8h | 880 |
| 145 | 2.6.1.3 | **Módulo de empleados** |  | 2d | 2017-06-28 12:00 | 2017-06-30 12:00 |  | 5.12d |  |  | 16h | 1,760 |
| 146 | 2.6.1.3.1 | Pruebas unitarias |  | 1d | 2017-06-28 12:00 | 2017-06-29 12:00 | 144 | 5.12d | 0d | RUR_TES | 8h | 880 |
| 147 | 2.6.1.3.2 | Pruebas de módulo |  | 1d | 2017-06-29 12:00 | 2017-06-30 12:00 | 146 | 5.12d | 0d | RUR_TES | 8h | 880 |
| 148 | 2.6.1.4 | **Módulo de proveedores** |  | 2d | 2017-06-30 12:00 | 2017-07-04 12:00 |  | 5.12d |  |  | 16h | 1,760 |
| 149 | 2.6.1.4.1 | Pruebas unitarias |  | 1d | 2017-06-30 12:00 | 2017-07-03 12:00 | 147 | 5.12d | 0d | RUR_TES | 8h | 880 |
| 150 | 2.6.1.4.2 | Pruebas de módulo |  | 1d | 2017-07-03 12:00 | 2017-07-04 12:00 | 149 | 5.12d | 0d | RUR_TES | 8h | 880 |
| 151 | 2.6.1.5 | **Módulo de marcas** |  | 2d | 2017-07-04 12:00 | 2017-07-06 12:00 |  | 5.12d |  |  | 16h | 1,760 |
| 152 | 2.6.1.5.1 | Pruebas unitarias |  | 1d | 2017-07-04 12:00 | 2017-07-05 12:00 | 150 | 5.12d | 0d | RUR_TES | 8h | 880 |
| 153 | 2.6.1.5.2 | Pruebas de módulo |  | 1d | 2017-07-05 12:00 | 2017-07-06 12:00 | 152 | 5.12d | 0d | RUR_TES | 8h | 880 |
| 154 | 2.6.1.6 | **Módulo de categorias** |  | 2d | 2017-07-06 12:00 | 2017-07-10 12:00 |  | 4.62d |  |  | 16h | 1,760 |
| 155 | 2.6.1.6.1 | Pruebas unitarias |  | 1d | 2017-07-06 12:00 | 2017-07-07 12:00 | 153 | 5.12d | 0d | RUR_TES | 8h | 880 |
| 156 | 2.6.1.6.2 | Pruebas de módulo |  | 1d | 2017-07-07 12:00 | 2017-07-10 12:00 | 155 | 4.62d | 0d | RUR_TES | 8h | 880 |
| 157 | 2.6.1.7 | **Módulo de ventas** |  | 2d | 2017-07-10 12:00 | 2017-07-12 12:00 |  | 2.62d |  |  | 16h | 1,760 |
| 158 | 2.6.1.7.1 | Pruebas unitarias |  | 1d | 2017-07-10 12:00 | 2017-07-11 12:00 | 156 | 3.62d | 0d | RUR_TES | 8h | 880 |
| 159 | 2.6.1.7.2 | Pruebas de módulo |  | 1d | 2017-07-11 12:00 | 2017-07-12 12:00 | 158 | 2.62d | 0d | RUR_TES | 8h | 880 |
| 160 | 2.6.1.8 | **Módulo de pedidos** |  | 2d | 2017-07-12 12:00 | 2017-07-14 12:00 |  | 0.62d |  |  | 16h | 1,760 |
| 161 | 2.6.1.8.1 | Pruebas unitarias |  | 1d | 2017-07-12 12:00 | 2017-07-13 12:00 | 159 | 1.62d | 0d | RUR_TES | 8h | 880 |
| 162 | 2.6.1.8.2 | Pruebas de módulo |  | 1d | 2017-07-13 12:00 | 2017-07-14 12:00 | 161 | 0.62d | 0d | RUR_TES | 8h | 880 |
| 163 | 2.6.1.9 | Pruebas del sistema |  | 2d | 2017-07-14 12:00 | 2017-07-18 12:00 | 162 | 0d |  | RUR_TES | 16h | 1,760 |
| 164 | 2.6.1.10 | Pruebas de integración |  | 2d | 2017-07-18 12:00 | 2017-07-20 12:00 | 163 | 0d |  | RUR_ING_VYL | 16h | 2,400 |
| 165 | 2.6.2 | Hito pruebas | milestone | 0d | 2017-06-22 12:00 | 2017-06-22 12:00 |  | 16.62d |  |  |  |  |

| ID | WBS | Task | Type | Duration | Start | Finish | Predecessors | Total slack | Free slack | Constraint | Resources | Work | Cost |
| --- | --- | --- | --- | --- | --- | --- | --- | --- | --- | --- | --- | --- | --- |
| 166 | 2.7 | **Implementación** |  | 0d | 2017-07-20 12:00 | 2017-07-21 10:00 | 137 | 0d |  |  |  | 10h | 1,116 |
| 167 | 2.7.1 | Seleccionar servidor web |  | 2h | 2017-07-20 12:00 | 2017-07-20 16:00 | 164 | 0d |  |  | AOC_P1; MAFR_P2 | 4h | 448 |
| 168 | 2.7.2 | Montar sitio web |  | 2h | 2017-07-20 16:00 | 2017-07-20 18:00 | 167 | 0d |  |  | AOC_P1; MAFR_P2 | 4h | 448 |
| 169 | 2.7.3 | Pruebas de integración |  | 2h | 2017-07-20 18:00 | 2017-07-21 10:00 | 168 | 0d |  |  | RUR_TES | 2h | 220 |
| 170 | 2.7.4 | Hito implementación | milestone | 0d | 2017-07-20 12:00 | 2017-07-20 12:00 |  | 0d |  |  |  |  |  |
| 171 | 2.8 | **Cierre del proyecto** |  | 1d? | 2017-07-21 10:00 | 2017-07-31 19:00 | 166 | 0d |  |  |  | 24h | 3,360 |
| 172 | 2.8.1 | Carta de aceptación |  | 1h | 2017-07-21 10:00 | 2017-07-21 11:00 | 169 | 0d |  |  | AS_CLI; MAFR_AD | 2h | 160 |
| 173 | 2.8.2 | Acta de cierre de proyecto |  | 1h | 2017-07-21 11:00 | 2017-07-21 12:00 | 172 | 0d |  |  | AS_CLI; MAFR_AD | 2h | 160 |
| 174 | 2.8.3 | Evaluación del desempeño |  | 3h | 2017-07-21 12:00 | 2017-07-21 17:00 | 173 | 0d |  |  | AOC_AN; MAFR_AD | 6h | 900 |
| 175 | 2.8.4 | Junta de lecciones aprendidas |  | 3h | 2017-07-21 17:00 | 2017-07-24 10:00 | 174 | 0d |  |  | AOC_AN; MAFR_AD | 6h | 900 |
| 176 | 2.8.5 | Revisión de adherencias |  | 2h | 2017-07-24 10:00 | 2017-07-24 12:00 | 175 | 0.25d | 0d |  | AOC_AN; MAFR_AD | 4h | 600 |
| 177 | 2.8.6 | Liberación de recursos |  | 2h | 2017-07-24 12:00 | 2017-07-24 16:00 | 176 | 0.5d | 0d |  | MAFR_AD | 2h | 320 |
| 178 | 2.8.7 | Informe final de cierre |  | 2h | 2017-07-24 16:00 | 2017-07-24 18:00 | 177 | 0.75d |  |  | MAFR_AD | 2h | 320 |
| 179 | 2.8.8 | Hito cierre de proyecto | milestone | 0d | 2017-07-21 10:00 | 2017-07-21 10:00 |  | 1d |  |  | MAFR_AD |  |  |
| 183 | 2.8.9 | **Revisión** |  | 1d? | 2017-07-21 10:00 | 2017-07-31 19:00 |  | 0d |  |  |  |  |  |
| 184 | 2.8.9.1 | Revisión 1 | milestone | 0d | 2017-07-21 10:00 | 2017-07-21 10:00 |  | 1d |  | start no earlier than 2017-05-06 09:00 |  |  |  |
| 185 | 2.8.9.2 | Revisión 2 | milestone | 0d | 2017-07-21 10:00 | 2017-07-21 10:00 |  | 1d |  | start no earlier than 2017-05-13 09:00 |  |  |  |
| 186 | 2.8.9.3 | Revisión 3 | milestone | 0d | 2017-07-21 10:00 | 2017-07-21 10:00 |  | 1d |  | start no earlier than 2017-05-20 09:00 |  |  |  |
| 187 | 2.8.9.4 | Revisión 4 | milestone | 0d | 2017-07-21 10:00 | 2017-07-21 10:00 |  | 1d |  | start no earlier than 2017-05-27 09:00 |  |  |  |
| 188 | 2.8.9.5 | Revisión 5 | milestone | 0d | 2017-07-21 10:00 | 2017-07-21 10:00 |  | 1d |  | start no earlier than 2017-06-03 09:00 |  |  |  |
| 189 | 2.8.9.6 | Revisión 6 | milestone | 0d | 2017-07-21 10:00 | 2017-07-21 10:00 |  | 1d |  | start no earlier than 2017-06-10 09:00 |  |  |  |
| 190 | 2.8.9.7 | Revisión 7 | milestone | 0d | 2017-07-21 10:00 | 2017-07-21 10:00 |  | 1d |  | start no earlier than 2017-06-17 09:00 |  |  |  |
| 191 | 2.8.9.8 | Revisión 8 | milestone | 0d | 2017-07-21 10:00 | 2017-07-21 10:00 |  | 1d |  | start no earlier than 2017-06-24 09:00 |  |  |  |
| 192 | 2.8.9.9 | Revisión 9 | milestone | 0d | 2017-07-21 10:00 | 2017-07-21 10:00 |  | 1d |  | start no earlier than 2017-07-01 09:00 |  |  |  |
| 193 | 2.8.9.10 | Revisión 10 | milestone | 0d | 2017-07-21 10:00 | 2017-07-21 10:00 |  | 1d |  | start no earlier than 2017-07-08 09:00 |  |  |  |
