Schedule from MS Project, 2017-05-02 to 2017-08-14, costs in $.
Hewlett-Packard

## Calendars

- EddyBurguer: Mon-Fri 09:00-13:00, 15:00-19:00; Sat-Sun off. Exceptions (off unless hours are given): 2017-05-05 (No laboral), 2017-05-15 (No laboral), 2017-07-04 (No laboral), 2017-07-17 to 2017-07-28 (vacaciones).

## Resources

| Resource | Rate |
| --- | --- |
| Administrador del proyecto | 160 |
| Analista | 140 |
| Diseñador | 120 |
| Administrador de la calidad | 150 |
| Administrador de la configuración | 150 |
| Programador | 112 |
| Cliente |  |
| Tester | 110 |
| Programador 2 | 112 |
| Ing. Verificación y validación | 150 |
| Tester2 | 110 |

## Schedule

| ID | WBS | Task | Type | Duration | Start | Finish | Predecessors | Total slack | Resources | Work | Cost |
| --- | --- | --- | --- | --- | --- | --- | --- | --- | --- | --- | --- |
| 1 | 1 | **Mejora de procesos** |  | 1.38d | 2017-05-02 09:00 | 2017-05-03 12:00 |  | 0d |  | 33h | 5,060 |
| 2 | 1.1 | **Plan preliminar** |  | 1.38d | 2017-05-02 09:00 | 2017-05-03 12:00 |  | 0d |  | 33h | 5,060 |
| 3 | 1.1.1 | Generar un WBS del producto inicial |  | 2h | 2017-05-02 09:00 | 2017-05-02 11:00 |  | 0d | Administrador del proyecto; Administrador de la calidad; Administrador de la configuración | 6h | 920 |
| 4 | 1.1.2 | Generar project charter |  | 2h | 2017-05-02 11:00 | 2017-05-02 13:00 | 3 | 0d | Administrador del proyecto; Administrador de la calidad; Administrador de la configuración | 6h | 920 |
| 5 | 1.1.3 | Plan preliminar del proyecto |  | 4h | 2017-05-02 15:00 | 2017-05-02 19:00 | 4 | 0d | Administrador del proyecto; Administrador de la calidad; Administrador de la configuración | 12h | 1,840 |
| 6 | 1.1.4 | Matriz de responsabilidades |  | 3h | 2017-05-03 09:00 | 2017-05-03 12:00 | 5 | 0d | Administrador del proyecto; Administrador de la calidad; Administrador de la configuración | 9h | 1,380 |
| 7 | 2 | **EddyBurguer** |  | 61.88d? | 2017-05-02 09:00 | 2017-08-14 18:00 |  | 0d |  | 659h | 84,988 |
| 8 | 2.1 | Formación del equipo de desarrollo |  | 1d | 2017-05-03 12:00 | 2017-05-04 12:00 | 6 | 0d | Administrador del proyecto | 8h | 1,280 |
| 9 | 2.2 | **Análisis** |  | 16.62d | 2017-05-02 09:00 | 2017-05-26 16:00 |  | 0d |  | 178h | 22,808 |
| 10 | 2.2.1 | **Elicitación de requerimientos** |  | 7d | 2017-05-04 12:00 | 2017-05-17 12:00 |  | 0d |  | 56h | 7,920 |
| 11 | 2.2.1.1 | Generar lista de proveedores |  | 1h | 2017-05-04 12:00 | 2017-05-04 13:00 | 8 | 0d | Analista | 1h | 140 |
| 12 | 2.2.1.2 | Evaluar proveedores de requerimientos |  | 4h | 2017-05-04 15:00 | 2017-05-04 19:00 | 11 | 0d | Administrador del proyecto | 4h | 640 |
| 13 | 2.2.1.3 | Definir la estrategia de recolección de requerimientos |  | 3h | 2017-05-08 09:00 | 2017-05-08 12:00 | 12 | 0d | Analista | 3h | 420 |
| 14 | 2.2.1.4 | Planificar reuniones de elicitación de requerimientos |  | 2d | 2017-05-08 12:00 | 2017-05-10 12:00 | 13 | 0d | Analista | 16h | 2,240 |
| 15 | 2.2.1.5 | Identificar los procesos del sistema |  | 2d | 2017-05-10 12:00 | 2017-05-12 12:00 | 14 | 0d | Analista | 16h | 2,240 |
| 16 | 2.2.1.6 | Identificar requerimientos funcionales |  | 1d | 2017-05-12 12:00 | 2017-05-16 12:00 | 15 | 0d | Analista | 8h | 1,120 |
| 17 | 2.2.1.7 | Identificar requerimientos no funcionales |  | 1d | 2017-05-16 12:00 | 2017-05-17 12:00 | 16 | 0d | Analista | 8h | 1,120 |
| 18 | 2.2.2 | **Especificación de requerimientos** |  | 3.5d | 2017-05-17 12:00 | 2017-05-22 18:00 | 10 | 0d |  | 72h | 8,048 |
| 19 | 2.2.2.1 | Describir los requerimientos |  | 1d | 2017-05-17 12:00 | 2017-05-18 12:00 | 17 | 0d | Analista | 8h | 1,120 |
| 20 | 2.2.2.2 | Evaluar los requerimientos |  | 4h | 2017-05-18 12:00 | 2017-05-18 18:00 | 19 | 0d | Analista; Administrador del proyecto; Programador; Diseñador | 16h | 2,128 |
| 21 | 2.2.2.3 | SRS |  | 2d | 2017-05-18 18:00 | 2017-05-22 18:00 | 20 | 0d | Analista; Administrador del proyecto; Cliente | 48h | 4,800 |
| 22 | 2.2.3 | **Gestión de requerimientos** |  | 2.75d | 2017-05-22 18:00 | 2017-05-25 16:00 | 18 | 0d |  | 42h | 5,640 |
| 23 | 2.2.3.1 | Priorizar los requerimientos |  | 5h | 2017-05-22 18:00 | 2017-05-23 13:00 | 21 | 0d | Analista | 5h | 700 |
| 24 | 2.2.3.2 | Almacenar los requerimientos en un repositorio central |  | 1h | 2017-05-23 15:00 | 2017-05-23 16:00 | 23 | 0d | Analista | 1h | 140 |
| 25 | 2.2.3.3 | Asignar al grupo de desarrollo los requerimientos del software |  | 4h | 2017-05-23 16:00 | 2017-05-24 10:00 | 24 | 0d | Analista; Administrador del proyecto | 8h | 1,200 |
| 26 | 2.2.3.4 | Administrar los cambios de los requerimientos |  | 4h | 2017-05-24 10:00 | 2017-05-24 16:00 | 25 | 0d | Analista; Cliente; Administrador del proyecto | 12h | 1,200 |
| 27 | 2.2.3.5 | Administrar la trazabilidad de los requerimientos |  | 1d | 2017-05-24 16:00 | 2017-05-25 16:00 | 26 | 0d | Analista; Administrador del proyecto | 16h | 2,400 |
| 28 | 2.2.4 | Pruebas de aceptación |  | 1d | 2017-05-25 16:00 | 2017-05-26 16:00 | 27 | 0d | Ing. Verificación y validación | 8h | 1,200 |
| 29 | 2.2.5 | Hito de análisis | milestone | 0d | 2017-05-02 09:00 | 2017-05-02 09:00 |  | 16.62d |  |  |  |

| ID | WBS | Task | Type | Duration | Start | Finish | Predecessors | Total slack | Resources | Work | Cost |
| --- | --- | --- | --- | --- | --- | --- | --- | --- | --- | --- | --- |
| 30 | 2.3 | **Planificación** |  | 13.38d | 2017-05-26 16:00 | 2017-06-14 19:00 | 9 | 0d |  | 186h | 27,636 |
| 31 | 2.3.1 | Definir el ciclo de vida |  | 2h | 2017-05-26 16:00 | 2017-05-26 18:00 | 28 | 0d | Analista; Administrador del proyecto | 4h | 600 |
| 32 | 2.3.2 | Políticas del proyecto |  | 2h | 2017-05-26 18:00 | 2017-05-29 10:00 | 31 | 0d | Administrador del proyecto | 2h | 320 |
| 33 | 2.3.3 | Actualizar plan de proyecto |  | 1d | 2017-05-29 10:00 | 2017-05-30 10:00 | 32 | 0d | Administrador del proyecto | 8h | 1,280 |
| 34 | 2.3.4 | **Estimación** |  | 2.75d | 2017-05-30 10:00 | 2017-06-01 18:00 | 33 | 0d |  | 22h | 3,520 |
| 35 | 2.3.4.1 | Actualizar WBS/calendario |  | 1d | 2017-05-30 10:00 | 2017-05-31 10:00 | 33 | 0d | Administrador del proyecto | 8h | 1,280 |
| 36 | 2.3.4.2 | Diccionario del WBS |  | 9h | 2017-05-31 10:00 | 2017-06-01 11:00 | 35 | 0d | Administrador del proyecto | 9h | 1,440 |
| 37 | 2.3.4.3 | Costos |  | 5h | 2017-06-01 11:00 | 2017-06-01 18:00 | 36 | 0d | Administrador del proyecto | 5h | 800 |
| 38 | 2.3.5 | **Riesgos** |  | 5.62d | 2017-06-01 18:00 | 2017-06-09 13:00 | 34 | 0d |  | 90h | 13,500 |
| 39 | 2.3.5.1 | Identificación de riesgos |  | 2d | 2017-06-01 18:00 | 2017-06-05 18:00 | 37 | 0d | Analista; Administrador del proyecto | 32h | 4,800 |
| 40 | 2.3.5.2 | Asignación de prioridades |  | 5h | 2017-06-05 18:00 | 2017-06-06 13:00 | 39 | 0d | Analista; Administrador del proyecto | 10h | 1,500 |
| 41 | 2.3.5.3 | Plan de mitigación y contingencia |  | 3d | 2017-06-06 15:00 | 2017-06-09 13:00 | 40 | 0d | Analista; Administrador del proyecto | 48h | 7,200 |
| 42 | 2.3.6 | **Aseguramiento de la calidad** |  | 2.5d | 2017-06-09 15:00 | 2017-06-13 19:00 | 38 | 0d |  | 52h | 7,216 |
| 43 | 2.3.6.1 | Plan de gestión de la configuración |  | 2d | 2017-06-09 15:00 | 2017-06-13 13:00 | 41 | 0d | Administrador de la configuración | 16h | 2,400 |
| 44 | 2.3.6.2 | Junta de arranque de construcción |  | 4h | 2017-06-13 15:00 | 2017-06-13 19:00 | 43 | 0d | Administrador de la configuración; Analista; Programador; Administrador del proyecto; Programador 2; Diseñador; Ing. Verificación y validación; Administrador de la calidad; Tester | 36h | 4,816 |
| 45 | 2.3.7 | Pruebas de aceptación |  | 1d | 2017-06-14 09:00 | 2017-06-14 19:00 | 44 | 0d | Ing. Verificación y validación | 8h | 1,200 |
| 46 | 2.3.8 | Hito planificación | milestone | 0d | 2017-05-26 16:00 | 2017-05-26 16:00 |  | 13.38d |  |  |  |
| 47 | 2.4 | **Diseño** |  | 10.88d | 2017-06-14 19:00 | 2017-06-29 18:00 | 30 | 0d |  | 87h | 10,440 |
| 48 | 2.4.1 | Definición de la arquitectura |  | 1d | 2017-06-15 09:00 | 2017-06-15 19:00 | 45 | 0d | Diseñador | 8h | 960 |
| 49 | 2.4.2 | **Diagramas UML** |  | 3d | 2017-06-16 09:00 | 2017-06-20 19:00 | 48 | 0d |  | 24h | 2,880 |
| 50 | 2.4.2.1 | Diagramas de casos de uso |  | 4h | 2017-06-16 09:00 | 2017-06-16 13:00 | 48 | 0d | Diseñador | 4h | 480 |
| 51 | 2.4.2.2 | Diagramas de secuencia |  | 4h | 2017-06-16 15:00 | 2017-06-16 19:00 | 50 | 0d | Diseñador | 4h | 480 |
| 52 | 2.4.2.3 | Diagrama de clases |  | 4h | 2017-06-19 09:00 | 2017-06-19 13:00 | 51 | 0d | Diseñador | 4h | 480 |
| 53 | 2.4.2.4 | Diagrama de actividades |  | 4h | 2017-06-19 15:00 | 2017-06-19 19:00 | 52 | 0d | Diseñador | 4h | 480 |
| 54 | 2.4.2.5 | Diagrama de componentes |  | 4h | 2017-06-20 09:00 | 2017-06-20 13:00 | 53 | 0d | Diseñador | 4h | 480 |
| 55 | 2.4.2.6 | Diagrama de despliegue |  | 4h | 2017-06-20 15:00 | 2017-06-20 19:00 | 54 | 0d | Diseñador | 4h | 480 |
| 56 | 2.4.3 | Mapa de navegación |  | 3h | 2017-06-21 09:00 | 2017-06-21 12:00 | 55 | 0d | Diseñador | 3h | 360 |
| 57 | 2.4.4 | Bocetos/maquetación |  | 5d | 2017-06-21 12:00 | 2017-06-28 12:00 | 56 | 0d | Diseñador | 40h | 4,800 |

| ID | WBS | Task | Type | Duration | Start | Finish | Predecessors | Total slack | Resources | Work | Cost |
| --- | --- | --- | --- | --- | --- | --- | --- | --- | --- | --- | --- |
| 58 | 2.4.5 | **Base de datos** |  | 0.5d | 2017-06-28 12:00 | 2017-06-28 18:00 | 49 | 0d |  | 4h | 480 |
| 59 | 2.4.5.1 | Diagrama E-R |  | 2h | 2017-06-28 12:00 | 2017-06-28 16:00 | 57 | 0d | Diseñador | 2h | 240 |
| 60 | 2.4.5.2 | Diagrama relacional |  | 2h | 2017-06-28 16:00 | 2017-06-28 18:00 | 59 | 0d | Diseñador | 2h | 240 |
| 61 | 2.4.6 | Pruebas de integración y de unidad |  | 1d | 2017-06-28 18:00 | 2017-06-29 18:00 | 60 | 0d | Diseñador | 8h | 960 |
| 62 | 2.4.7 | Hito de diseño | milestone | 0d | 2017-06-14 19:00 | 2017-06-14 19:00 |  | 10.88d |  |  |  |
| 63 | 2.5 | **Codificación** |  | 19.25d | 2017-06-29 18:00 | 2017-08-11 10:00 | 47 | 0d |  | 146h | 16,656 |
| 64 | 2.5.1 | Codificación de la base de datos |  | 2h | 2017-06-29 18:00 | 2017-06-30 10:00 | 61 | 0d | Programador | 2h | 224 |
| 65 | 2.5.2 | **Front-end** |  | 6.5d | 2017-06-30 10:00 | 2017-07-11 16:00 | 64 | 0d |  | 44h | 4,928 |
| 66 | 2.5.2.1 | Página inicio |  | 6h | 2017-06-30 10:00 | 2017-06-30 18:00 | 64 | 0d | Programador 2 | 6h | 672 |
| 67 | 2.5.2.2 | Página instalaciones |  | 6h | 2017-06-30 18:00 | 2017-07-03 16:00 | 66 | 0d | Programador 2 | 6h | 672 |
| 68 | 2.5.2.3 | Página productos |  | 2d | 2017-07-03 16:00 | 2017-07-06 16:00 | 67 | 0d | Programador 2 | 16h | 1,792 |
| 69 | 2.5.2.4 | Página Contacto |  | 8h | 2017-07-06 16:00 | 2017-07-07 16:00 | 68 | 0d | Programador 2 | 8h | 896 |
| 70 | 2.5.2.5 | Página filosofía empresarial |  | 2h | 2017-07-07 16:00 | 2017-07-07 18:00 | 69 | 0d | Programador 2 | 2h | 224 |
| 71 | 2.5.2.6 | Página ofertas |  | 1d | 2017-07-07 18:00 | 2017-07-10 18:00 | 70 | 0d |  |  |  |
| 72 | 2.5.2.7 | Página detalle de producto |  | 6h | 2017-07-10 18:00 | 2017-07-11 16:00 | 71 | 0d | Programador 2 | 6h | 672 |
| 73 | 2.5.3 | **Back-end** |  | 11.5d | 2017-07-11 16:00 | 2017-08-10 10:00 | 65 | 0d |  | 92h | 10,304 |
| 74 | 2.5.3.1 | **Módulo de usuarios** |  | 1.5d | 2017-07-11 16:00 | 2017-07-13 10:00 | 72 | 0d |  | 12h | 1,344 |
| 75 | 2.5.3.1.1 | Interfaz |  | 1h | 2017-07-11 16:00 | 2017-07-11 17:00 | 72 | 0d | Programador | 1h | 112 |
| 76 | 2.5.3.1.2 | Formulario Editar/Agregar |  | 1h | 2017-07-11 17:00 | 2017-07-11 18:00 | 75 | 0d | Programador | 1h | 112 |
| 77 | 2.5.3.1.3 | **Clase usuario** |  | 1.25d | 2017-07-11 18:00 | 2017-07-13 10:00 | 76 | 0d |  | 10h | 1,120 |
| 78 | 2.5.3.1.3.1 | Función listar |  | 2h | 2017-07-11 18:00 | 2017-07-12 10:00 | 76 | 0d | Programador | 2h | 224 |
| 79 | 2.5.3.1.3.2 | Función registrar |  | 2h | 2017-07-12 10:00 | 2017-07-12 12:00 | 78 | 0d | Programador | 2h | 224 |
| 80 | 2.5.3.1.3.3 | Función editar |  | 2h | 2017-07-12 12:00 | 2017-07-12 16:00 | 79 | 0d | Programador | 2h | 224 |
| 81 | 2.5.3.1.3.4 | Función eliminar |  | 4h | 2017-07-12 16:00 | 2017-07-13 10:00 | 80 | 0d | Programador | 4h | 448 |

| ID | WBS | Task | Duration | Start | Finish | Predecessors | Total slack | Resources | Work | Cost |
| --- | --- | --- | --- | --- | --- | --- | --- | --- | --- | --- |
| 82 | 2.5.3.2 | **Módulo productos** | 1.5d | 2017-07-13 10:00 | 2017-07-14 16:00 | 74 | 0d |  | 12h | 1,344 |
| 83 | 2.5.3.2.1 | Interfaz | 2h | 2017-07-13 10:00 | 2017-07-13 12:00 | 81 | 0d | Programador | 2h | 224 |
| 84 | 2.5.3.2.2 | Formulario Editar/Agregar | 2h | 2017-07-13 12:00 | 2017-07-13 16:00 | 83 | 0d | Programador | 2h | 224 |
| 85 | 2.5.3.2.3 | **Clase productos** | 1d | 2017-07-13 16:00 | 2017-07-14 16:00 |  | 0d |  | 8h | 896 |
| 86 | 2.5.3.2.3.1 | Función listar | 2h | 2017-07-13 16:00 | 2017-07-13 18:00 | 84 | 0d | Programador | 2h | 224 |
| 87 | 2.5.3.2.3.2 | Función registrar | 2h | 2017-07-13 18:00 | 2017-07-14 10:00 | 86 | 0d | Programador | 2h | 224 |
| 88 | 2.5.3.2.3.3 | Función editar | 2h | 2017-07-14 10:00 | 2017-07-14 12:00 | 87 | 0d | Programador | 2h | 224 |
| 89 | 2.5.3.2.3.4 | Función eliminar | 2h | 2017-07-14 12:00 | 2017-07-14 16:00 | 88 | 0d | Programador | 2h | 224 |
| 90 | 2.5.3.3 | **Módulo empleados** | 1.5d | 2017-07-14 16:00 | 2017-08-01 10:00 | 82 | 0d |  | 12h | 1,344 |
| 91 | 2.5.3.3.1 | Interfaz | 2h | 2017-07-14 16:00 | 2017-07-14 18:00 | 89 | 0d | Programador 2 | 2h | 224 |
| 92 | 2.5.3.3.2 | Formulario Editar/Agregar | 2h | 2017-07-14 18:00 | 2017-07-31 10:00 | 91 | 0d | Programador 2 | 2h | 224 |
| 93 | 2.5.3.3.3 | **Clase empleados** | 1d | 2017-07-31 10:00 | 2017-08-01 10:00 |  | 0d |  | 8h | 896 |
| 94 | 2.5.3.3.3.1 | Función listar | 2h | 2017-07-31 10:00 | 2017-07-31 12:00 | 92 | 0d | Programador 2 | 2h | 224 |
| 95 | 2.5.3.3.3.2 | Función registrar | 2h | 2017-07-31 12:00 | 2017-07-31 16:00 | 94 | 0d | Programador 2 | 2h | 224 |
| 96 | 2.5.3.3.3.3 | Función editar | 2h | 2017-07-31 16:00 | 2017-07-31 18:00 | 95 | 0d | Programador 2 | 2h | 224 |
| 97 | 2.5.3.3.3.4 | Función eliminar | 2h | 2017-07-31 18:00 | 2017-08-01 10:00 | 96 | 0d | Programador 2 | 2h | 224 |
| 98 | 2.5.3.4 | **Módulo proveedores** | 1.5d | 2017-08-01 10:00 | 2017-08-02 16:00 | 90 | 0d |  | 12h | 1,344 |
| 99 | 2.5.3.4.1 | Interfaz | 2h | 2017-08-01 10:00 | 2017-08-01 12:00 | 97 | 0d | Programador 2 | 2h | 224 |
| 100 | 2.5.3.4.2 | Formulario Editar/Agregar | 2h | 2017-08-01 12:00 | 2017-08-01 16:00 | 99 | 0d | Programador 2 | 2h | 224 |
| 101 | 2.5.3.4.3 | **Clase proveedores** | 1d | 2017-08-01 16:00 | 2017-08-02 16:00 |  | 0d |  | 8h | 896 |
| 102 | 2.5.3.4.3.1 | Función listar | 2h | 2017-08-01 16:00 | 2017-08-01 18:00 | 100 | 0d | Programador 2 | 2h | 224 |
| 103 | 2.5.3.4.3.2 | Función registrar | 2h | 2017-08-01 18:00 | 2017-08-02 10:00 | 102 | 0d | Programador 2 | 2h | 224 |
| 104 | 2.5.3.4.3.3 | Función editar | 2h | 2017-08-02 10:00 | 2017-08-02 12:00 | 103 | 0d | Programador 2 | 2h | 224 |
| 105 | 2.5.3.4.3.4 | Función eliminar | 2h | 2017-08-02 12:00 | 2017-08-02 16:00 | 104 | 0d | Programador 2 | 2h | 224 |

| ID | WBS | Task | Duration | Start | Finish | Predecessors | Total slack | Free slack | Resources | Work | Cost |
| --- | --- | --- | --- | --- | --- | --- | --- | --- | --- | --- | --- |
| 106 | 2.5.3.5 | **Módulo Marcas** | 1.5d | 2017-08-02 16:00 | 2017-08-04 10:00 | 98 | 0d |  |  | 12h | 1,344 |
| 107 | 2.5.3.5.1 | Interfaz | 2h | 2017-08-02 16:00 | 2017-08-02 18:00 | 105 | 0d |  | Programador | 2h | 224 |
| 108 | 2.5.3.5.2 | Formulario Editar/Agregar | 2h | 2017-08-02 18:00 | 2017-08-03 10:00 | 107 | 0d |  | Programador | 2h | 224 |
| 109 | 2.5.3.5.3 | **Clase Marcas** | 1d | 2017-08-03 10:00 | 2017-08-04 10:00 |  | 0d |  |  | 8h | 896 |
| 110 | 2.5.3.5.3.1 | Función listar | 2h | 2017-08-03 10:00 | 2017-08-03 12:00 | 108 | 0d |  | Programador | 2h | 224 |
| 111 | 2.5.3.5.3.2 | Función registrar | 2h | 2017-08-03 12:00 | 2017-08-03 16:00 | 110 | 0d |  | Programador | 2h | 224 |
| 112 | 2.5.3.5.3.3 | Función editar | 2h | 2017-08-03 16:00 | 2017-08-03 18:00 | 111 | 0d |  | Programador | 2h | 224 |
| 113 | 2.5.3.5.3.4 | Función eliminar | 2h | 2017-08-03 18:00 | 2017-08-04 10:00 | 112 | 0d |  | Programador | 2h | 224 |
| 114 | 2.5.3.6 | **Módulo categorías** | 1.5d | 2017-08-04 10:00 | 2017-08-07 16:00 | 106 | 0d |  |  | 12h | 1,344 |
| 115 | 2.5.3.6.1 | Interfaz | 2h | 2017-08-04 10:00 | 2017-08-04 12:00 | 113 | 0d |  | Programador | 2h | 224 |
| 116 | 2.5.3.6.2 | Formulario Editar/Agregar | 2h | 2017-08-04 12:00 | 2017-08-04 16:00 | 115 | 0d |  | Programador | 2h | 224 |
| 117 | 2.5.3.6.3 | **Clase Categorías** | 1d | 2017-08-04 16:00 | 2017-08-07 16:00 |  | 0d |  |  | 8h | 896 |
| 118 | 2.5.3.6.3.1 | Función listar | 2h | 2017-08-04 16:00 | 2017-08-04 18:00 | 116 | 0d |  | Programador | 2h | 224 |
| 119 | 2.5.3.6.3.2 | Función registrar | 2h | 2017-08-04 18:00 | 2017-08-07 10:00 | 118 | 0d |  | Programador | 2h | 224 |
| 120 | 2.5.3.6.3.3 | Función editar | 2h | 2017-08-07 10:00 | 2017-08-07 12:00 | 119 | 0d |  | Programador | 2h | 224 |
| 121 | 2.5.3.6.3.4 | Función eliminar | 2h | 2017-08-07 12:00 | 2017-08-07 16:00 | 120 | 0d |  | Programador | 2h | 224 |
| 122 | 2.5.3.7 | **Módulo Ventas** | 1.25d | 2017-08-07 16:00 | 2017-08-08 18:00 | 114 | 0d |  |  | 10h | 1,120 |
| 123 | 2.5.3.7.1 | Interfaz | 2h | 2017-08-07 16:00 | 2017-08-07 18:00 | 121 | 0d |  | Programador | 2h | 224 |
| 124 | 2.5.3.7.2 | Formulario Editar/Agregar | 2h | 2017-08-07 18:00 | 2017-08-08 10:00 | 123 | 0d |  | Programador | 2h | 224 |
| 125 | 2.5.3.7.3 | **Clase Ventas** | 0.75d | 2017-08-08 10:00 | 2017-08-08 18:00 |  | 0d |  |  | 6h | 672 |
| 126 | 2.5.3.7.3.1 | Función listar | 2h | 2017-08-08 10:00 | 2017-08-08 12:00 | 124 | 0d |  | Programador | 2h | 224 |
| 127 | 2.5.3.7.3.2 | Función registrar | 2h | 2017-08-08 12:00 | 2017-08-08 16:00 | 126 | 0d |  | Programador | 2h | 224 |
| 128 | 2.5.3.7.3.3 | Función eliminar | 2h | 2017-08-08 16:00 | 2017-08-08 18:00 | 127 | 0d |  | Programador | 2h | 224 |
| 129 | 2.5.3.8 | **Módulo Pedidos** | 1.25d | 2017-08-08 18:00 | 2017-08-10 10:00 | 122 | 1.75d |  |  | 10h | 1,120 |
| 130 | 2.5.3.8.1 | Interfaz | 2h | 2017-08-08 18:00 | 2017-08-09 10:00 | 128 | 1.75d | 0d | Programador 2 | 2h | 224 |
| 131 | 2.5.3.8.2 | Formulario Editar/Agregar | 2h | 2017-08-09 10:00 | 2017-08-09 12:00 | 130 | 1.75d | 0d | Programador 2 | 2h | 224 |

| ID | WBS | Task | Type | Duration | Start | Finish | Predecessors | Total slack | Free slack | Resources | Work | Cost |
| --- | --- | --- | --- | --- | --- | --- | --- | --- | --- | --- | --- | --- |
| 132 | 2.5.3.8.3 | **Clase pedidos** |  | 0.75d | 2017-08-09 12:00 | 2017-08-10 10:00 |  | 1.75d |  |  | 6h | 672 |
| 133 | 2.5.3.8.3.1 | Función listar |  | 2h | 2017-08-09 12:00 | 2017-08-09 16:00 | 131 | 1.75d | 0d | Programador 2 | 2h | 224 |
| 134 | 2.5.3.8.3.2 | Función registrar |  | 2h | 2017-08-09 16:00 | 2017-08-09 18:00 | 133 | 1.75d | 0d | Programador 2 | 2h | 224 |
| 135 | 2.5.3.8.3.3 | Función eliminar |  | 2h | 2017-08-09 18:00 | 2017-08-10 10:00 | 134 | 1.75d | 0d | Programador 2 | 2h | 224 |
| 136 | 2.5.4 | Operación y mantenimiento |  | 1d | 2017-08-10 10:00 | 2017-08-11 10:00 | 135 | 1.75d |  | Ing. Verificación y validación | 8h | 1,200 |
| 137 | 2.5.5 | Hito codificación | milestone | 0d | 2017-06-29 18:00 | 2017-06-29 18:00 |  | 21d |  |  |  |  |
| 138 | 2.6 | **Pruebas** |  | 2.5d | 2017-08-08 18:00 | 2017-08-11 12:00 | 122 | 0d |  |  | 36h | 3,960 |
| 139 | 2.6.1 | **Caja blanca** |  | 2.5d | 2017-08-08 18:00 | 2017-08-11 12:00 | 122 | 0d |  |  | 36h | 3,960 |
| 140 | 2.6.1.1 | **Módulo de usuarios** |  | 0.5d | 2017-08-08 18:00 | 2017-08-09 12:00 |  | 0d |  |  | 4h | 440 |
| 141 | 2.6.1.1.1 | Pruebas unitarias |  | 2h | 2017-08-08 18:00 | 2017-08-09 10:00 | 122 | 0d |  | Tester | 2h | 220 |
| 142 | 2.6.1.1.2 | Pruebas de módulo |  | 2h | 2017-08-09 10:00 | 2017-08-09 12:00 | 141 | 0d |  | Tester | 2h | 220 |
| 143 | 2.6.1.2 | **Módulo de productos** |  | 0.5d | 2017-08-08 18:00 | 2017-08-09 12:00 | 140SS | 0.5d | 0d |  | 4h | 440 |
| 144 | 2.6.1.2.1 | Pruebas unitarias |  | 2h | 2017-08-08 18:00 | 2017-08-09 10:00 |  | 0.5d | 0d | Tester2 | 2h | 220 |
| 145 | 2.6.1.2.2 | Pruebas de módulo |  | 2h | 2017-08-09 10:00 | 2017-08-09 12:00 | 144 | 0.5d |  | Tester2 | 2h | 220 |
| 146 | 2.6.1.3 | **Módulo de empleados** |  | 0.5d | 2017-08-09 12:00 | 2017-08-09 18:00 | 140 | 0d |  |  | 4h | 440 |
| 147 | 2.6.1.3.1 | Pruebas unitarias |  | 2h | 2017-08-09 12:00 | 2017-08-09 16:00 |  | 0d |  | Tester | 2h | 220 |
| 148 | 2.6.1.3.2 | Pruebas de módulo |  | 2h | 2017-08-09 16:00 | 2017-08-09 18:00 | 147 | 0d |  | Tester | 2h | 220 |
| 149 | 2.6.1.4 | **Módulo de proveedores** |  | 0.5d | 2017-08-09 12:00 | 2017-08-09 18:00 | 143 | 0.5d | 0d |  | 4h | 440 |
| 150 | 2.6.1.4.1 | Pruebas unitarias |  | 2h | 2017-08-09 12:00 | 2017-08-09 16:00 |  | 0.5d | 0d | Tester2 | 2h | 220 |
| 151 | 2.6.1.4.2 | Pruebas de módulo |  | 2h | 2017-08-09 16:00 | 2017-08-09 18:00 | 150 | 0.5d |  | Tester2 | 2h | 220 |
| 152 | 2.6.1.5 | **Módulo de marcas** |  | 0.5d | 2017-08-09 18:00 | 2017-08-10 12:00 | 146 | 0d |  |  | 4h | 440 |
| 153 | 2.6.1.5.1 | Pruebas unitarias |  | 2h | 2017-08-09 18:00 | 2017-08-10 10:00 |  | 0d |  | Tester | 2h | 220 |
| 154 | 2.6.1.5.2 | Pruebas de módulo |  | 2h | 2017-08-10 10:00 | 2017-08-10 12:00 | 153 | 0d |  | Tester | 2h | 220 |
| 155 | 2.6.1.6 | **Módulo de categorias** |  | 0.5d | 2017-08-09 18:00 | 2017-08-10 12:00 | 149 | 0.5d | 0d |  | 4h | 440 |
| 156 | 2.6.1.6.1 | Pruebas unitarias |  | 2h | 2017-08-09 18:00 | 2017-08-10 10:00 |  | 0.5d | 0d | Tester2 | 2h | 220 |
| 157 | 2.6.1.6.2 | Pruebas de módulo |  | 2h | 2017-08-10 10:00 | 2017-08-10 12:00 | 156 | 0.5d |  | Tester2 | 2h | 220 |

| ID | WBS | Task | Type | Duration | Start | Finish | Predecessors | Total slack | Free slack | Constraint | Resources | Work | Cost |
| --- | --- | --- | --- | --- | --- | --- | --- | --- | --- | --- | --- | --- | --- |
| 158 | 2.6.1.7 | **Módulo de ventas** |  | 0.5d | 2017-08-10 12:00 | 2017-08-10 18:00 | 152 | 0d |  |  |  | 4h | 440 |
| 159 | 2.6.1.7.1 | Pruebas unitarias |  | 2h | 2017-08-10 12:00 | 2017-08-10 16:00 |  | 0d |  |  | Tester | 2h | 220 |
| 160 | 2.6.1.7.2 | Pruebas de módulo |  | 2h | 2017-08-10 16:00 | 2017-08-10 18:00 | 159 | 0d |  |  | Tester | 2h | 220 |
| 161 | 2.6.1.8 | **Módulo de pedidos** |  | 0.5d | 2017-08-10 12:00 | 2017-08-10 18:00 | 155 | 0.5d |  |  |  | 4h | 440 |
| 162 | 2.6.1.8.1 | Pruebas unitarias |  | 2h | 2017-08-10 12:00 | 2017-08-10 16:00 |  | 0.5d | 0d |  | Tester2 | 2h | 220 |
| 163 | 2.6.1.8.2 | Pruebas de módulo |  | 2h | 2017-08-10 16:00 | 2017-08-10 18:00 | 162 | 0.5d |  |  | Tester2 | 2h | 220 |
| 164 | 2.6.1.9 | Pruebas del sistema |  | 2h | 2017-08-10 18:00 | 2017-08-11 10:00 | 158 | 0d |  |  | Tester | 2h | 220 |
| 165 | 2.6.1.10 | Pruebas de integración |  | 2h | 2017-08-11 10:00 | 2017-08-11 12:00 | 164 | 0d |  |  | Tester2 | 2h | 220 |
| 166 | 2.6.2 | Hito pruebas | milestone | 0d | 2017-08-08 18:00 | 2017-08-08 18:00 |  | 2.5d |  |  | Ing. Verificación y validación |  |  |
| 167 | 2.7 | **Implementación** |  | 0.5d | 2017-08-11 12:00 | 2017-08-11 18:00 | 138 | 0d |  |  |  | 6h | 668 |
| 168 | 2.7.1 | Seleccionar servidor web |  | 1h | 2017-08-11 12:00 | 2017-08-11 13:00 | 165 | 0d |  |  | Programador; Programador 2 | 2h | 224 |
| 169 | 2.7.2 | Montar sitio web |  | 1h | 2017-08-11 15:00 | 2017-08-11 16:00 | 168 | 0d |  |  | Programador; Programador 2 | 2h | 224 |
| 170 | 2.7.3 | Pruebas de integración |  | 2h | 2017-08-11 16:00 | 2017-08-11 18:00 | 169 | 0d |  |  | Tester | 2h | 220 |
| 171 | 2.7.4 | Hito implementación | milestone | 0d | 2017-08-11 12:00 | 2017-08-11 12:00 |  | 0.5d |  |  |  |  |  |
| 172 | 2.8 | **Cierre del proyecto** |  | 1d? | 2017-08-11 18:00 | 2017-08-14 18:00 | 167 | 0d |  |  |  | 12h | 1,540 |
| 173 | 2.8.1 | Carta de aceptación |  | 1h | 2017-08-11 18:00 | 2017-08-11 19:00 |  | 0.88d |  |  | Cliente; Administrador del proyecto | 2h | 160 |
| 174 | 2.8.2 | Acta de cierre de proyecto |  | 1h | 2017-08-11 18:00 | 2017-08-11 19:00 |  | 0.88d |  |  | Cliente; Administrador del proyecto | 2h | 160 |
| 175 | 2.8.3 | Evaluación del desempeño |  | 1h | 2017-08-11 18:00 | 2017-08-11 19:00 |  | 0.88d |  |  | Analista; Administrador del proyecto | 2h | 300 |
| 176 | 2.8.4 | Junta de lecciones aprendidas |  | 1h | 2017-08-11 18:00 | 2017-08-11 19:00 |  | 0.88d |  |  | Analista; Administrador del proyecto | 2h | 300 |
| 177 | 2.8.5 | Revisión de adherencias |  | 1h | 2017-08-11 18:00 | 2017-08-11 19:00 |  | 0.88d |  |  | Analista; Administrador del proyecto | 2h | 300 |
| 178 | 2.8.6 | Liberación de recursos |  | 1h | 2017-08-11 18:00 | 2017-08-11 19:00 |  | 0.88d |  |  | Administrador del proyecto | 1h | 160 |
| 179 | 2.8.7 | Informe final de cierre |  | 1h | 2017-08-11 18:00 | 2017-08-11 19:00 |  | 0.88d |  |  | Administrador del proyecto | 1h | 160 |
| 180 | 2.8.8 | Hito cierre de proyecto | milestone | 0d | 2017-08-11 18:00 | 2017-08-11 18:00 |  | 1d |  |  | Administrador del proyecto |  |  |
| 184 | 2.8.9 | **Revisión** |  | 1d? | 2017-08-11 18:00 | 2017-08-14 18:00 |  | 0d |  |  |  |  |  |
| 185 | 2.8.9.1 | Revisión 1 | milestone | 0d | 2017-08-11 18:00 | 2017-08-11 18:00 |  | 1d |  | start no earlier than 2017-05-06 09:00 |  |  |  |
| 186 | 2.8.9.2 | Revisión 2 | milestone | 0d | 2017-08-11 18:00 | 2017-08-11 18:00 |  | 1d |  | start no earlier than 2017-05-13 09:00 |  |  |  |
| 187 | 2.8.9.3 | Revisión 3 | milestone | 0d | 2017-08-11 18:00 | 2017-08-11 18:00 |  | 1d |  | start no earlier than 2017-05-20 09:00 |  |  |  |
| 188 | 2.8.9.4 | Revisión 4 | milestone | 0d | 2017-08-11 18:00 | 2017-08-11 18:00 |  | 1d |  | start no earlier than 2017-05-27 09:00 |  |  |  |
| 189 | 2.8.9.5 | Revisión 5 | milestone | 0d | 2017-08-11 18:00 | 2017-08-11 18:00 |  | 1d |  | start no earlier than 2017-06-03 09:00 |  |  |  |
| 190 | 2.8.9.6 | Revisión 6 | milestone | 0d | 2017-08-11 18:00 | 2017-08-11 18:00 |  | 1d |  | start no earlier than 2017-06-10 09:00 |  |  |  |
| 191 | 2.8.9.7 | Revisión 7 | milestone | 0d | 2017-08-11 18:00 | 2017-08-11 18:00 |  | 1d |  | start no earlier than 2017-06-17 09:00 |  |  |  |
| 192 | 2.8.9.8 | Revisión 8 | milestone | 0d | 2017-08-11 18:00 | 2017-08-11 18:00 |  | 1d |  | start no earlier than 2017-06-24 09:00 |  |  |  |
| 193 | 2.8.9.9 | Revisión 9 | milestone | 0d | 2017-08-11 18:00 | 2017-08-11 18:00 |  | 1d |  | start no earlier than 2017-07-01 09:00 |  |  |  |
| 194 | 2.8.9.10 | Revisión 10 | milestone | 0d | 2017-08-11 18:00 | 2017-08-11 18:00 |  | 1d |  | start no earlier than 2017-07-08 09:00 |  |  |  |
